# Electronic Engine Controller

Schedule from MS Project, 2020-01-06 to 2020-06-08.

## Calendars

- Standard: Mon-Fri 08:00-12:00, 13:00-17:00; Sat-Sun off.

## Schedule

| ID | WBS | Task | Type | Duration | Start | Finish | Predecessors | Total slack |
| --- | --- | --- | --- | --- | --- | --- | --- | --- |
| 1 | 1 | **Prototyping and Schematic Creation** |  | 15d | 2020-01-06 | 2020-01-27 |  | 0d |
| 2 | 1.1 | Initial Prototype Schematic Creation | manual | 6d | 2020-01-06 | 2020-01-12 |  |  |
| 3 | 1.2 | Build and Test Protoypes | manual | 16d | 2020-01-06 | 2020-01-26 |  |  |
| 4 | 1.3 | Full Schematic Design | manual | 11d | 2020-01-13 | 2020-01-26 |  |  |
| 5 | 1.4 | Full Schematic Finished | milestone, manual | 0d | 2020-01-27 | 2020-01-27 | 4 |  |
| 6 | 2 | **Board Layout and Design** |  | 65d | 2020-01-27 | 2020-04-27 |  | 0d |
| 7 | 2.1 | **Board Layout Revision 1** |  | 26d | 2020-01-27 | 2020-03-01 |  |  |
| 8 | 2.1.1 | Create Board Layout in Altium | manual | 6d | 2020-01-27 | 2020-02-02 | 4 |  |
| 9 | 2.1.2 | Order Board Rev. 1 | milestone, manual | 0d | 2020-02-03 | 2020-02-03 | 8 |  |
| 10 | 2.1.3 | Wait for Manufacture and Shipping | manual | 11d | 2020-02-03 | 2020-02-16 | 9 |  |
| 11 | 2.1.4 | Assemble Board | manual | 4d | 2020-02-17 | 2020-02-20 | 10 |  |
| 12 | 2.1.5 | Test Board | manual | 7d | 2020-02-21 | 2020-03-01 | 11 |  |
| 13 | 2.2 | **Board Layout Revision 2** |  | 26d | 2020-02-21 | 2020-03-29 |  | 0d |
| 14 | 2.2.1 | Redesign Layout in Altium | manual | 7d | 2020-02-21 | 2020-03-01 | 11 |  |
| 15 | 2.2.2 | Order Board Rev. 2 | milestone, manual | 0d | 2020-03-02 | 2020-03-02 | 14 |  |
| 16 | 2.2.3 | Wait for Manufacture and Shipping | manual | 11d | 2020-03-02 | 2020-03-15 | 15 |  |
| 17 | 2.2.4 | Assemble Board | manual | 4d | 2020-03-16 | 2020-03-19 | 16 |  |
| 18 | 2.2.5 | Test Board | manual | 7d | 2020-03-20 | 2020-03-29 | 17 |  |
| 19 | 2.3 | **Board Layout Revison 3** |  | 26d | 2020-03-20 | 2020-04-27 |  | 0d |
| 20 | 2.3.1 | Redesign Layout in Altium | manual | 7d | 2020-03-20 | 2020-03-29 | 17 |  |
| 21 | 2.3.2 | Order Board Rev. 3 | milestone, manual | 0d | 2020-03-30 | 2020-03-30 | 20 |  |
| 22 | 2.3.3 | Wait for Manufacture and Shipping | manual | 11d | 2020-03-30 | 2020-04-12 | 21 |  |
| 23 | 2.3.4 | Assemble Board | manual | 4d | 2020-04-13 | 2020-04-16 | 22 |  |
| 24 | 2.3.5 | Test Board | manual | 7d | 2020-04-17 | 2020-04-26 | 23 |  |
| 25 | 2.3.6 | Hardware Design Finalized | milestone, manual | 0d | 2020-04-27 | 2020-04-27 |  |  |

| ID | WBS | Task | Type | Duration | Start | Finish | Predecessors | Total slack |
| --- | --- | --- | --- | --- | --- | --- | --- | --- |
| 26 | 3 | **Software Development and Testing** |  | 105d | 2020-01-13 | 2020-06-08 |  | 0d |
| 27 | 3.1 | **Prototype Software** |  | 29d | 2020-01-13 | 2020-02-20 |  | 0d |
| 28 | 3.1.1 | Write Initial Prototype Testing Software | manual | 29d | 2020-01-13 | 2020-02-20 | 2 |  |
| 29 | 3.2 | **Software** |  | 45d | 2020-04-06 | 2020-06-08 |  | 0d |
| 30 | 3.2.1 | Create Crank Angle Sensing Module | manual | 6d | 2020-04-06 | 2020-04-12 | 28 |  |
| 31 | 3.2.2 | Create Software for TPS, Air Flow, and O2 Sensors | manual | 6d | 2020-04-13 | 2020-04-19 | 30 |  |
| 32 | 3.2.3 | Write Software for Controlling Fuel | manual | 6d | 2020-04-20 | 2020-04-26 | 31 |  |
| 33 | 3.2.4 | Write Software for Controlling Ignition | manual | 6d | 2020-04-27 | 2020-05-03 | 32 |  |
| 34 | 3.2.5 | Implement Startup, Idle Control, and General I/O | manual | 6d | 2020-05-04 | 2020-05-10 | 33 |  |
| 35 | 3.2.6 | Integreate PC Tuning Software and Logging | manual | 6d | 2020-05-11 | 2020-05-17 | 34 |  |
| 36 | 3.2.7 | Integrate Software Modules | manual | 6d | 2020-05-18 | 2020-05-24 | 35 |  |
| 37 | 3.2.8 | Test and Debug | manual | 6d | 2020-05-25 | 2020-05-31 | 36 |  |
| 38 | 3.2.9 | Software Devolopment Complete | milestone, manual | 0d | 2020-06-01 | 2020-06-01 | 37 |  |
| 39 | 3.2.10 | Create Demonstration Hardware and Project Documentation | manual | 6d | 2020-06-01 | 2020-06-07 | 38 |  |
| 40 | 3.2.11 | Demonstrate Project | milestone, manual | 0d | 2020-06-08 | 2020-06-08 |  |  |
